# gantt_catedra

Schedule from MS Project, 2011-08-01 to 2012-09-03, A marks actual dates.

## Calendars

- LUISITO: Mon-Fri 09:00-13:00, 15:00-19:00; Sat-Sun off.

## Schedule

| ID | WBS | Task | Duration | Start | Finish | Predecessors | Complete | Remaining | Total slack | Free slack |
| --- | --- | --- | --- | --- | --- | --- | --- | --- | --- | --- |
| 1 | 1 | **Investigación** | 8d | 2011-08-01 A | 2011-08-10 A |  | 100% |  |  |  |
| 2 | 1.1 | Desarrollos internacionales | 3d | 2011-08-01 A | 2011-08-03 A |  | 100% |  |  |  |
| 3 | 1.2 | Desarrollos nacionales | 3d | 2011-08-04 A | 2011-08-08 A | 2 | 100% |  |  |  |
| 4 | 1.3 | Recopilación de documentación | 2d | 2011-08-09 A | 2011-08-10 A | 3 | 100% |  |  |  |
| 5 | 2 | **Placa FPGA** | 84d | 2011-08-11 A | 2011-12-06 |  | 56% | 37.2d | 194d |  |
| 6 | 2.1 | FPGA a utilizar | 10d | 2011-08-11 A | 2011-08-24 A | 4 | 100% |  |  |  |
| 7 | 2.2 | Memoria de prog. FPGA | 12d | 2011-08-25 A | 2011-09-09 A | 6 | 100% |  |  |  |
| 8 | 2.3 | Circuito de alimentación | 14d | 2011-09-12 A | 2011-09-29 A | 7 | 100% |  |  |  |
| 9 | 2.4 | Pinout placa FPGA | 11d | 2011-09-30 A | 2011-10-14 | 8 | 40% | 6.6d | 199.4d | 0d |
| 10 | 2.5 | Diseño de placa FPGA | 24d | 2011-10-17 A | 2011-11-17 | 9 | 20% | 19.2d | 194.6d | 0d |
| 11 | 2.6 | Documentación modo de prog. | 3d | 2011-11-18 A | 2011-11-22 | 10 | 20% | 2.4d | 194d | 0d |
| 12 | 2.7 | Documentación Placa FPGA | 10d | 2011-11-23 A | 2011-12-06 | 11 | 10% | 9d | 194d |  |
| 13 | 3 | **Placa BASE** | 105d | 2011-12-07 A | 2012-05-01 |  | 35% | 68.7d | 15.4d |  |
| 14 | 3.1 | USB/JTAG | 30d | 2011-12-07 A | 2012-01-17 A | 12 | 100% |  |  |  |
| 15 | 3.2 | Periféricos | 30d | 2012-01-18 A | 2012-02-28 | 14 | 20% | 24d | 0.3d | 0d |
| 16 | 3.3 | Circuito de alimentación | 24d | 2012-02-29 | 2012-04-02 | 15 |  |  | 0.3d | 0d |
| 17 | 3.4 | Diseño de placa BASE | 18d | 2012-04-03 | 2012-04-26 | 16 |  |  | 0.3d | 0d |
| 18 | 3.5 | Documentación Placa BASE | 3d | 2012-04-27 A | 2012-05-01 | 17 | 10% | 2.7d | 15.4d | 0d |
| 19 | 4 | **Importación** | 51d | 2012-05-02 A | 2012-07-11 |  | 30% | 35.6d | 0d |  |
| 20 | 4.1 | Importación de placas | 26d | 2012-05-02 A | 2012-06-06 | 18 | 40% | 15.6d | 5d | 0d |
| 21 | 4.2 | Importación de componentes | 25d | 2012-06-07 A | 2012-07-11 | 20 | 20% | 20d | 0d |  |
| 22 | 5 | **Armado de placas** | 20d | 2012-07-12 | 2012-08-08 |  |  |  | 0d |  |
| 23 | 5.1 | Armado de placas FPGA | 10d | 2012-07-12 | 2012-07-25 | 21 |  |  | 0d |  |
| 24 | 5.2 | Armado de placas BASE | 10d | 2012-07-26 | 2012-08-08 | 23 |  |  | 0d |  |

| ID | WBS | Task | Duration | Start | Finish | Predecessors | Total slack |
| --- | --- | --- | --- | --- | --- | --- | --- |
| 25 | 6 | **Testeo** | 3d | 2012-08-09 | 2012-08-13 |  | 0d |
| 26 | 6.1 | Medición de potencia | 1d | 2012-08-09 | 2012-08-09 | 24 | 0d |
| 27 | 6.2 | Documentación | 2d | 2012-08-10 | 2012-08-13 | 26 | 0d |
| 28 | 7 | **Documentación** | 9d | 2012-08-14 | 2012-08-24 |  | 0d |
| 29 | 7.1 | Placa FPGA | 3d | 2012-08-14 | 2012-08-16 | 27 | 0d |
| 30 | 7.2 | Placa BASE | 5d | 2012-08-17 | 2012-08-23 | 29 | 0d |
| 31 | 7.3 | Edición y formato de documentos | 1d | 2012-08-24 | 2012-08-24 | 30 | 0d |
| 32 | 8 | Transferencia | 6d | 2012-08-27 | 2012-09-03 | 31 | 0d |
