Schedule from Planner, 2011-08-01 to 2012-07-24.

## Calendars

- Predeterminado: Mon-Sat 08:00-14:00; Sun off.

## Resources

| Resource | Rate |
| --- | --- |
| Luis A. Guanuco | 250 |
| Sergio Olmedo |  |
| Pablo Cayuela |  |
| gabriel dagostino |  |

## Schedule

| ID | WBS | Task | Start | Finish | Predecessors | Resources | Work |
| --- | --- | --- | --- | --- | --- | --- | --- |
| 1 | 1 | **Investigación** | 2011-08-01 | 2011-08-09 |  |  | 48h |
| 2 | 1.1 | **desarrollo internacional** | 2011-08-01 | 2011-08-03 |  |  | 18h |
| 3 | 1.1.1 | perfíl de prestaciones | 2011-08-01 | 2011-08-02 |  |  | 12h |
| 4 | 1.1.2 | costo de transferencia | 2011-08-03 | 2011-08-03 | 3 |  | 6h |
| 5 | 1.2 | **desarrollo nacional** | 2011-08-04 | 2011-08-06 |  | Luis A. Guanuco | 18h |
| 6 | 1.2.1 | perfíl de prestaciones | 2011-08-04 | 2011-08-05 | 4 |  | 12h |
| 7 | 1.2.2 | costo de transferencia | 2011-08-06 | 2011-08-06 | 6 |  | 6h |
| 8 | 1.3 | Recopilación de Documentación | 2011-08-08 | 2011-08-09 | 7 |  | 12h |
| 9 | 2 | **placa FPGA** | 2011-08-10 | 2011-12-07 |  |  | 636h |
| 10 | 2.1 | **FPGA a utilizar** | 2011-08-10 | 2011-08-26 |  |  | 96h |
| 11 | 2.1.1 | fabricante | 2011-08-10 | 2011-08-12 | 8 |  | 18h |
| 12 | 2.1.2 | recursos | 2011-08-13 | 2011-08-16 | 11 |  | 18h |
| 13 | 2.1.3 | modo de programación | 2011-08-17 | 2011-08-20 | 12 |  | 24h |
| 14 | 2.1.4 | velocidad de prog. | 2011-08-17 | 2011-08-17 | 12 |  | 6h |
| 15 | 2.1.5 | encapsulado | 2011-08-22 | 2011-08-22 | 13, 14 |  | 6h |
| 16 | 2.1.6 | documentación | 2011-08-23 | 2011-08-26 | 15 |  | 24h |
| 17 | 2.2 | **memoria de prog. para la FPGA** | 2011-08-27 | 2011-09-27 |  |  | 168h |
| 18 | 2.2.1 | **protocolo** | 2011-08-27 | 2011-08-31 |  |  | 24h |
| 19 | 2.2.1.1 | disponibilidad en la FPGA | 2011-08-27 | 2011-08-29 | 16 |  | 12h |
| 20 | 2.2.1.2 | estandares de la IEEE | 2011-08-30 | 2011-08-31 | 19 |  | 12h |
| 21 | 2.2.2 | tamaño Mb | 2011-09-01 | 2011-09-01 | 20, 16 |  | 6h |
| 22 | 2.2.3 | **fabricante** | 2011-09-02 | 2011-09-20 |  |  | 96h |
| 23 | 2.2.3.1 | controladores para diferentes SO | 2011-09-02 | 2011-09-06 | 21 |  | 24h |
| 24 | 2.2.3.2 | Documentación disponible | 2011-09-07 | 2011-09-10 | 23 |  | 24h |
| 25 | 2.2.3.3 | elección de memoria | 2011-09-12 | 2011-09-14 | 24, 23 |  | 18h |
| 26 | 2.2.3.4 | implementación de nota de aplicación | 2011-09-15 | 2011-09-20 | 25 |  | 30h |
| 27 | 2.2.4 | modo de programación | 2011-09-21 | 2011-09-24 | 26 |  | 24h |
| 28 | 2.2.5 | velocidad de prog. | 2011-09-21 | 2011-09-21 | 26, 24 |  | 6h |
| 29 | 2.2.6 | encapsulado | 2011-09-26 | 2011-09-26 | 27, 28, 25 |  | 6h |
| 30 | 2.2.7 | documentación | 2011-09-27 | 2011-09-27 | 29 |  | 6h |

| ID | WBS | Task | Start | Finish | Predecessors | Work |
| --- | --- | --- | --- | --- | --- | --- |
| 31 | 2.3 | **circuito de alimentación** | 2011-09-28 | 2011-10-13 |  | 84h |
| 32 | 2.3.1 | potencia | 2011-09-28 | 2011-10-01 | 16, 30 | 24h |
| 33 | 2.3.2 | tensiones reguladas | 2011-10-03 | 2011-10-04 | 32 | 12h |
| 34 | 2.3.3 | reguladores | 2011-10-05 | 2011-10-06 | 33 | 12h |
| 35 | 2.3.4 | fabricantes | 2011-10-07 | 2011-10-07 | 34 | 6h |
| 36 | 2.3.5 | circuito | 2011-10-08 | 2011-10-11 | 35 | 18h |
| 37 | 2.3.6 | documentación | 2011-10-12 | 2011-10-13 | 36 | 12h |
| 38 | 2.4 | **pinout de la placa** | 2011-10-14 | 2011-10-26 |  | 66h |
| 39 | 2.4.1 | cantidad de pines necesarios | 2011-10-14 | 2011-10-17 | 12, 37 | 18h |
| 40 | 2.4.2 | características de velocidad | 2011-10-18 | 2011-10-19 | 39 | 12h |
| 41 | 2.4.3 | tipo de conector | 2011-10-20 | 2011-10-22 | 40 | 18h |
| 42 | 2.4.4 | fabricantes | 2011-10-24 | 2011-10-24 | 41 | 6h |
| 43 | 2.4.5 | documentación | 2011-10-25 | 2011-10-26 | 39, 42 | 12h |
| 44 | 2.5 | **diseño de placa** | 2011-10-27 | 2011-11-22 |  | 144h |
| 45 | 2.5.1 | obtener librerías | 2011-10-27 | 2011-10-28 | 16, 30, 37, 43 | 12h |
| 46 | 2.5.2 | diseño de esquemático | 2011-10-29 | 2011-11-02 | 45 | 24h |
| 47 | 2.5.3 | **diseño de PCB** | 2011-11-03 | 2011-11-16 |  | 78h |
| 48 | 2.5.3.1 | definir dimensiones | 2011-11-03 | 2011-11-03 | 46 | 6h |
| 49 | 2.5.3.2 | definir capas | 2011-11-03 | 2011-11-03 | 46 | 6h |
| 50 | 2.5.3.3 | distribuir componentes | 2011-11-04 | 2011-11-04 | 48, 49 | 6h |
| 51 | 2.5.3.4 | routear componentes | 2011-11-05 | 2011-11-16 | 50 | 60h |
| 52 | 2.5.4 | generar gerber | 2011-11-17 | 2011-11-17 | 51 | 6h |
| 53 | 2.5.5 | chequear para su fabricación | 2011-11-18 | 2011-11-18 | 52 | 6h |
| 54 | 2.5.6 | documentación | 2011-11-19 | 2011-11-22 | 53 | 18h |
| 55 | 2.6 | documentar modo de prog. y grabado de memoria | 2011-11-23 | 2011-11-25 | 16, 30, 43, 54 | 18h |
| 56 | 2.7 | documentación placa FPGA | 2011-11-26 | 2011-12-07 | 55 | 60h |

| ID | WBS | Task | Start | Finish | Predecessors | Work |
| --- | --- | --- | --- | --- | --- | --- |
| 57 | 3 | **placa BASE** | 2011-12-08 | 2012-05-11 |  | 858h |
| 58 | 3.1 | **USB/JTAG** | 2011-12-08 | 2012-02-04 |  | 336h |
| 59 | 3.1.1 | busqueda de proyectos LGPL | 2011-12-08 | 2011-12-13 | 56 | 30h |
| 60 | 3.1.2 | **Estudio del interfaz USB** | 2011-12-14 | 2011-12-27 |  | 84h |
| 61 | 3.1.2.1 | especificaciones estandares | 2011-12-14 | 2011-12-15 | 59 | 12h |
| 62 | 3.1.2.2 | trama | 2011-12-14 | 2011-12-14 | 59 | 6h |
| 63 | 3.1.2.3 | velocidades | 2011-12-14 | 2011-12-14 | 59 | 6h |
| 64 | 3.1.2.4 | características eléctricas | 2011-12-16 | 2011-12-17 | 63, 62, 61 | 12h |
| 65 | 3.1.2.5 | precauciones | 2011-12-19 | 2011-12-19 | 59, 64 | 6h |
| 66 | 3.1.2.6 | controladores dedicados | 2011-12-20 | 2011-12-20 | 65, 59 | 6h |
| 67 | 3.1.2.7 | controladores programables | 2011-12-21 | 2011-12-22 | 66 | 12h |
| 68 | 3.1.2.8 | documentación | 2011-12-23 | 2011-12-27 | 67 | 24h |
| 69 | 3.1.3 | **Estudio del interfaz JTAG** | 2011-12-28 | 2012-01-09 |  | 78h |
| 70 | 3.1.3.1 | especificaciones estandares | 2011-12-28 | 2011-12-29 | 68 | 12h |
| 71 | 3.1.3.2 | trama | 2011-12-28 | 2011-12-28 | 68 | 6h |
| 72 | 3.1.3.3 | velocidades | 2011-12-28 | 2011-12-28 | 68 | 6h |
| 73 | 3.1.3.4 | características eléctricas | 2011-12-30 | 2011-12-31 | 70, 71, 72 | 12h |
| 74 | 3.1.3.5 | controladores | 2012-01-02 | 2012-01-03 | 59, 73 | 12h |
| 75 | 3.1.3.6 | compatibilidad con FPGA | 2012-01-04 | 2012-01-05 | 74 | 12h |
| 76 | 3.1.3.7 | documentación | 2012-01-06 | 2012-01-09 | 59, 75 | 18h |
| 77 | 3.1.4 | **diseño USB a JTAG** | 2012-01-10 | 2012-02-01 |  | 126h |
| 78 | 3.1.4.1 | **dispositivo central integrado a utilizar** | 2012-01-10 | 2012-01-16 |  | 36h |
| 79 | 3.1.4.1.1 | estudio de datasheet | 2012-01-10 | 2012-01-12 | 76, 59 | 18h |
| 80 | 3.1.4.1.2 | notas de aplicación | 2012-01-13 | 2012-01-14 | 79 | 12h |
| 81 | 3.1.4.1.3 | encapsulado | 2012-01-16 | 2012-01-16 | 80 | 6h |
| 82 | 3.1.4.2 | busqueda de librerías | 2012-01-17 | 2012-01-18 | 81 | 12h |
| 83 | 3.1.4.3 | diseño de esquemático | 2012-01-19 | 2012-01-20 | 82 | 12h |

| ID | WBS | Task | Start | Finish | Predecessors | Work |
| --- | --- | --- | --- | --- | --- | --- |
| 84 | 3.1.4.4 | **diseño PCB** | 2012-01-21 | 2012-01-25 | 83 | 30h |
| 85 | 3.1.4.4.1 | definir dimensiones | 2012-01-21 | 2012-01-21 | 83 | 6h |
| 86 | 3.1.4.4.2 | definir capas | 2012-01-21 | 2012-01-21 | 83 | 6h |
| 87 | 3.1.4.4.3 | distribuir componentes | 2012-01-23 | 2012-01-23 | 85, 86 | 6h |
| 88 | 3.1.4.4.4 | routear componentes | 2012-01-24 | 2012-01-25 | 87 | 12h |
| 89 | 3.1.4.5 | construcción y testeo | 2012-01-26 | 2012-01-27 | 88 | 12h |
| 90 | 3.1.4.6 | documentación | 2012-01-28 | 2012-02-01 | 89 | 24h |
| 91 | 3.1.5 | Documentación | 2012-02-02 | 2012-02-04 | 59, 90 | 18h |
| 92 | 3.2 | **Periféricos** | 2012-02-06 | 2012-03-20 |  | 252h |
| 93 | 3.2.1 | **Designar datos I/O** | 2012-02-06 | 2012-02-22 |  | 114h |
| 94 | 3.2.1.1 | Pulsadores | 2012-02-06 | 2012-02-06 | 91 | 6h |
| 95 | 3.2.1.2 | Llaves | 2012-02-06 | 2012-02-06 | 91 | 6h |
| 96 | 3.2.1.3 | LEDs | 2012-02-06 | 2012-02-06 | 91 | 6h |
| 97 | 3.2.1.4 | Display | 2012-02-06 | 2012-02-06 | 91 | 6h |
| 98 | 3.2.1.5 | Conector IDE | 2012-02-06 | 2012-02-06 | 91 | 6h |
| 99 | 3.2.1.6 | **datos aislados galvánicamente** | 2012-02-07 | 2012-02-13 |  | 36h |
| 100 | 3.2.1.6.1 | requerimientos y fabricantes posibles | 2012-02-07 | 2012-02-08 | 94, 95, 96, 97, 98 | 12h |
| 101 | 3.2.1.6.2 | esquemático y asignación de pines | 2012-02-09 | 2012-02-10 | 100 | 12h |
| 102 | 3.2.1.6.3 | potencia | 2012-02-11 | 2012-02-11 | 101 | 6h |
| 103 | 3.2.1.6.4 | documentación | 2012-02-13 | 2012-02-13 | 102 | 6h |
| 104 | 3.2.1.7 | Esquema de conexionado y designación de pines FPGA | 2012-02-14 | 2012-02-15 | 103 | 12h |
| 105 | 3.2.1.8 | Cálculo de potencia de periféricos | 2012-02-16 | 2012-02-18 | 104 | 18h |
| 106 | 3.2.1.9 | Documentación | 2012-02-20 | 2012-02-22 | 105 | 18h |
| 107 | 3.2.2 | **Conversores** | 2012-02-23 | 2012-03-14 |  | 108h |
| 108 | 3.2.2.1 | Requerimientos y fabricantes posibles | 2012-02-23 | 2012-02-28 | 106 | 30h |

| ID | WBS | Task | Start | Finish | Predecessors | Work |
| --- | --- | --- | --- | --- | --- | --- |
| 109 | 3.2.2.2 | **ADC** | 2012-02-29 | 2012-03-05 |  | 30h |
| 110 | 3.2.2.2.1 | resolución | 2012-02-29 | 2012-02-29 | 108 | 6h |
| 111 | 3.2.2.2.2 | comunicación serial | 2012-03-01 | 2012-03-01 | 110 | 6h |
| 112 | 3.2.2.2.3 | esquematico y asignación de pines | 2012-03-02 | 2012-03-03 | 111 | 12h |
| 113 | 3.2.2.2.4 | documentación | 2012-03-05 | 2012-03-05 | 112 | 6h |
| 114 | 3.2.2.3 | **DAC** | 2012-03-06 | 2012-03-10 |  | 30h |
| 115 | 3.2.2.3.1 | resolución | 2012-03-06 | 2012-03-06 | 113 | 6h |
| 116 | 3.2.2.3.2 | comunicación serial | 2012-03-07 | 2012-03-07 | 115 | 6h |
| 117 | 3.2.2.3.3 | esquemático y asignación de pines | 2012-03-08 | 2012-03-09 | 116 | 12h |
| 118 | 3.2.2.3.4 | docuentación | 2012-03-10 | 2012-03-10 | 117 | 6h |
| 119 | 3.2.2.4 | Cálculo de potencia | 2012-03-12 | 2012-03-12 | 113, 118 | 6h |
| 120 | 3.2.2.5 | Documentación | 2012-03-13 | 2012-03-14 | 119 | 12h |
| 121 | 3.2.3 | **Puerto Serie** | 2012-03-15 | 2012-03-19 |  | 24h |
| 122 | 3.2.3.1 | diseño de driver: DB9 y conector IDE para un 2do puerto | 2012-03-15 | 2012-03-15 | 120 | 6h |
| 123 | 3.2.3.2 | esquemático y asignación de pines | 2012-03-16 | 2012-03-16 | 122 | 6h |
| 124 | 3.2.3.3 | calculo de potencia | 2012-03-17 | 2012-03-17 | 123 | 6h |
| 125 | 3.2.3.4 | documentación | 2012-03-19 | 2012-03-19 | 124 | 6h |
| 126 | 3.2.4 | asociar todo los periféricos con conector FPGA | 2012-03-20 | 2012-03-20 | 125 | 6h |
| 127 | 3.3 | **Fuente de Alimentacion** | 2012-03-21 | 2012-04-17 |  | 144h |
| 128 | 3.3.1 | requerimientos de potencia | 2012-03-21 | 2012-03-22 | 126 | 12h |
| 129 | 3.3.2 | **fabricantes IC de fuentes** | 2012-03-23 | 2012-03-28 |  | 30h |
| 130 | 3.3.2.1 | estudio notas de aplicación | 2012-03-23 | 2012-03-26 | 128 | 18h |
| 131 | 3.3.2.2 | análisis de costo | 2012-03-27 | 2012-03-27 | 130 | 6h |
| 132 | 3.3.2.3 | documentación | 2012-03-28 | 2012-03-28 | 131 | 6h |

| ID | WBS | Task | Start | Finish | Predecessors | Work |
| --- | --- | --- | --- | --- | --- | --- |
| 133 | 3.3.3 | **fabricantes de reguladores** | 2012-03-29 | 2012-03-31 |  | 18h |
| 134 | 3.3.3.1 | estudio notas de aplicación | 2012-03-29 | 2012-03-29 | 132 | 6h |
| 135 | 3.3.3.2 | análisis de costo | 2012-03-30 | 2012-03-30 | 134 | 6h |
| 136 | 3.3.3.3 | documentación | 2012-03-31 | 2012-03-31 | 135 | 6h |
| 137 | 3.3.4 | esquemático de fuente | 2012-04-02 | 2012-04-05 | 136 | 24h |
| 138 | 3.3.5 | esquemático de regulador | 2012-04-06 | 2012-04-07 | 137 | 12h |
| 139 | 3.3.6 | asignación de pines y jumper de configuración | 2012-04-09 | 2012-04-09 | 138 | 6h |
| 140 | 3.3.7 | testeo | 2012-04-10 | 2012-04-14 | 139 | 30h |
| 141 | 3.3.8 | documentación | 2012-04-16 | 2012-04-17 | 140 | 12h |
| 142 | 3.4 | **diseño de placa** | 2012-04-18 | 2012-05-08 |  | 108h |
| 143 | 3.4.1 | obtener liberías | 2012-04-18 | 2012-04-18 | 141 | 6h |
| 144 | 3.4.2 | diseño de esquemático | 2012-04-19 | 2012-04-19 | 143 | 6h |
| 145 | 3.4.3 | **diseño PCB** | 2012-04-20 | 2012-05-04 |  | 78h |
| 146 | 3.4.3.1 | definir dimensiones | 2012-04-20 | 2012-04-20 | 144 | 6h |
| 147 | 3.4.3.2 | definir capas | 2012-04-21 | 2012-04-21 | 146 | 6h |
| 148 | 3.4.3.3 | distribuir componentes | 2012-04-23 | 2012-04-23 | 147 | 6h |
| 149 | 3.4.3.4 | routear componentes | 2012-04-24 | 2012-05-04 | 148 | 60h |
| 150 | 3.4.4 | generar gerber | 2012-05-05 | 2012-05-05 | 149 | 6h |
| 151 | 3.4.5 | chequear para su fabricación | 2012-05-07 | 2012-05-07 | 150 | 6h |
| 152 | 3.4.6 | documentación | 2012-05-08 | 2012-05-08 | 151 | 6h |
| 153 | 3.5 | documentación placa BASE | 2012-05-09 | 2012-05-11 | 152 | 18h |
| 154 | 4 | **importación** | 2012-05-08 | 2012-06-07 |  | 312h |
| 155 | 4.1 | **Importación de placas** | 2012-05-08 | 2012-06-06 |  | 156h |
| 156 | 4.1.1 | (estimativo)presupuestar online placas | 2012-05-08 | 2012-05-08 | 53, 151 | 6h |
| 157 | 4.1.2 | contactar fabricantes y cotizar | 2012-05-09 | 2012-05-11 | 156 | 18h |
| 158 | 4.1.3 | realizar pago | 2012-05-12 | 2012-05-14 | 157 | 12h |
| 159 | 4.1.4 | comienza proceso de fabricación | 2012-05-15 | 2012-06-06 | 158 | 120h |

| ID | WBS | Task | Start | Finish | Predecessors | Work |
| --- | --- | --- | --- | --- | --- | --- |
| 160 | 4.2 | **Importación de componentes** | 2012-05-09 | 2012-06-06 |  | 150h |
| 161 | 4.2.1 | cotizar online componentes | 2012-05-09 | 2012-05-09 | 54, 152 | 6h |
| 162 | 4.2.2 | chequear encapsulados a comprar | 2012-05-10 | 2012-05-10 | 161 | 6h |
| 163 | 4.2.3 | definir cantidad a comprar | 2012-05-11 | 2012-05-11 | 162 | 6h |
| 164 | 4.2.4 | realizar pago | 2012-05-12 | 2012-05-14 | 163 | 12h |
| 165 | 4.2.5 | comienza proceso de envío de componentes | 2012-05-15 | 2012-06-06 | 164 | 120h |
| 166 | 4.3 | documentación de facturación y recepción de componentes | 2012-06-07 | 2012-06-07 | 159, 165 | 6h |
| 167 | 5 | **armado placas** | 2012-06-08 | 2012-06-25 |  | 90h |
| 168 | 5.1 | obtener herramientas de soldadura SMD | 2012-06-08 | 2012-06-11 | 166 | 18h |
| 169 | 5.2 | **Construcción placa FPGA** | 2012-06-12 | 2012-06-15 |  | 24h |
| 170 | 5.2.1 | soldado de componentes principales | 2012-06-12 | 2012-06-13 | 168 | 12h |
| 171 | 5.2.2 | soldado de demás componentes | 2012-06-14 | 2012-06-14 | 170 | 6h |
| 172 | 5.2.3 | testear pines de alimentación | 2012-06-15 | 2012-06-15 | 171 | 6h |
| 173 | 5.3 | **Construcción placa Base** | 2012-06-16 | 2012-06-20 |  | 24h |
| 174 | 5.3.1 | soldado de componentes principales | 2012-06-16 | 2012-06-18 | 172 | 12h |
| 175 | 5.3.2 | soldado de demás componentes | 2012-06-19 | 2012-06-19 | 174 | 6h |
| 176 | 5.3.3 | testear pines de alimentación | 2012-06-20 | 2012-06-20 | 175 | 6h |
| 177 | 5.4 | documentación | 2012-06-21 | 2012-06-25 | 176 | 24h |
| 178 | 6 | **Testeo** | 2012-06-26 | 2012-07-05 |  | 54h |
| 179 | 6.1 | revisar continuidad de alimentación | 2012-06-26 | 2012-06-26 | 177 | 6h |
| 180 | 6.2 | alimentar circuito con fuente reguladora de corriente | 2012-06-27 | 2012-06-27 | 179 | 6h |
| 181 | 6.3 | diseñar arquitectura en VHDL para testing | 2012-06-28 | 2012-07-02 | 180 | 24h |
| 182 | 6.4 | medición de consumo de potencia | 2012-07-03 | 2012-07-03 | 181 | 6h |
| 183 | 6.5 | documentación | 2012-07-04 | 2012-07-05 | 182 | 12h |

| ID | WBS | Task | Start | Finish | Predecessors | Work |
| --- | --- | --- | --- | --- | --- | --- |
| 184 | 7 | **Documentación** | 2012-07-06 | 2012-07-16 |  | 54h |
| 185 | 7.1 | placa FPGA | 2012-07-06 | 2012-07-09 | 56, 183 | 18h |
| 186 | 7.2 | placa BASE | 2012-07-10 | 2012-07-14 | 185, 153 | 30h |
| 187 | 7.3 | asignar formato a documento (LaTeX) | 2012-07-16 | 2012-07-16 | 186 | 6h |
| 188 | 8 | **Transferencia** | 2012-07-17 | 2012-07-24 |  | 42h |
| 189 | 8.1 | acto de entraga de tecnología al LTDI | 2012-07-17 | 2012-07-17 | 187 | 6h |
| 190 | 8.2 | capacitación para el uso de plataforma | 2012-07-18 | 2012-07-23 | 189 | 30h |
| 191 | 8.3 | brindís por fin del proyecto | 2012-07-24 | 2012-07-24 | 190 | 6h |
