Schedule from Planner, 2011-06-17 to 2013-01-21.

## Calendars

- Predeterminado: Mon-Fri 17:00-23:00; Sat-Sun off.

## Resources

| Resource | Rate |
| --- | --- |
| gabriel dagostino |  |
| Pablo Cayuela |  |
| Sergio Olmedo |  |
| Luis A. Guanuco | 250 |

## Schedule

| ID | WBS | Task | Start | Finish | Predecessors | Resources | Work |
| --- | --- | --- | --- | --- | --- | --- | --- |
| 1 | 1 | **Investigación** | 2011-06-17 | 2011-06-28 |  |  | 48h |
| 2 | 1.1 | **desarrollo internacional** | 2011-06-17 | 2011-06-21 |  |  | 18h |
| 3 | 1.1.1 | perfíl de prestaciones | 2011-06-17 | 2011-06-20 |  |  | 12h |
| 4 | 1.1.2 | costo de transferencia | 2011-06-21 | 2011-06-21 | 3 |  | 6h |
| 5 | 1.2 | **desarrollo nacional** | 2011-06-22 | 2011-06-24 |  | Luis A. Guanuco | 18h |
| 6 | 1.2.1 | perfíl de prestaciones | 2011-06-22 | 2011-06-23 | 4 |  | 12h |
| 7 | 1.2.2 | costo de transferencia | 2011-06-24 | 2011-06-24 | 6 |  | 6h |
| 8 | 1.3 | Recopilación de Documentación | 2011-06-27 | 2011-06-28 | 7 |  | 12h |
| 9 | 2 | **placa FPGA** | 2011-06-29 | 2011-12-16 |  |  | 756h |
| 10 | 2.1 | **FPGA a utilizar** | 2011-06-29 | 2011-07-19 |  |  | 96h |
| 11 | 2.1.1 | fabricante | 2011-06-29 | 2011-07-01 | 8 |  | 18h |
| 12 | 2.1.2 | recursos | 2011-07-04 | 2011-07-06 | 11 |  | 18h |
| 13 | 2.1.3 | modo de programación | 2011-07-07 | 2011-07-12 | 12 |  | 24h |
| 14 | 2.1.4 | velocidad de prog. | 2011-07-07 | 2011-07-07 | 12 |  | 6h |
| 15 | 2.1.5 | encapsulado | 2011-07-13 | 2011-07-13 | 13, 14 |  | 6h |
| 16 | 2.1.6 | documentación | 2011-07-14 | 2011-07-19 | 15 |  | 24h |
| 17 | 2.2 | **memoria de prog. para la FPGA** | 2011-07-20 | 2011-08-29 |  |  | 180h |
| 18 | 2.2.1 | **protocolo** | 2011-07-20 | 2011-07-25 |  |  | 24h |
| 19 | 2.2.1.1 | disponibilidad en la FPGA | 2011-07-20 | 2011-07-21 | 16 |  | 12h |
| 20 | 2.2.1.2 | estandares de la IEEE | 2011-07-22 | 2011-07-25 | 19 |  | 12h |
| 21 | 2.2.2 | tamaño Mb | 2011-07-26 | 2011-07-27 | 20, 16 |  | 12h |
| 22 | 2.2.3 | **fabricante** | 2011-07-28 | 2011-08-18 |  |  | 96h |
| 23 | 2.2.3.1 | controladores para diferentes SO | 2011-07-28 | 2011-08-02 | 21 |  | 24h |
| 24 | 2.2.3.2 | Documentación disponible | 2011-08-03 | 2011-08-08 | 23 |  | 24h |
| 25 | 2.2.3.3 | elección de memoria | 2011-08-09 | 2011-08-11 | 24, 23 |  | 18h |
| 26 | 2.2.3.4 | implementación de nota de aplicación | 2011-08-12 | 2011-08-18 | 25 |  | 30h |
| 27 | 2.2.4 | modo de programación | 2011-08-19 | 2011-08-24 | 26 |  | 24h |
| 28 | 2.2.5 | velocidad de prog. | 2011-08-19 | 2011-08-19 | 26, 24 |  | 6h |
| 29 | 2.2.6 | encapsulado | 2011-08-25 | 2011-08-26 | 27, 28, 25 |  | 12h |
| 30 | 2.2.7 | documentación | 2011-08-29 | 2011-08-29 | 29 |  | 6h |

| ID | WBS | Task | Start | Finish | Predecessors | Work |
| --- | --- | --- | --- | --- | --- | --- |
| 31 | 2.3 | **circuito de alimentación** | 2011-08-30 | 2011-09-23 |  | 114h |
| 32 | 2.3.1 | potencia | 2011-08-30 | 2011-09-02 | 16, 30 | 24h |
| 33 | 2.3.2 | tensiones reguladas | 2011-09-05 | 2011-09-08 | 32 | 24h |
| 34 | 2.3.3 | reguladores | 2011-09-09 | 2011-09-12 | 33 | 12h |
| 35 | 2.3.4 | fabricantes | 2011-09-13 | 2011-09-16 | 34 | 24h |
| 36 | 2.3.5 | circuito | 2011-09-19 | 2011-09-21 | 35 | 18h |
| 37 | 2.3.6 | documentación | 2011-09-22 | 2011-09-23 | 36 | 12h |
| 38 | 2.4 | **pinout de la placa** | 2011-09-26 | 2011-10-25 |  | 132h |
| 39 | 2.4.1 | cantidad de pines necesarios | 2011-09-26 | 2011-10-03 | 12, 37 | 36h |
| 40 | 2.4.2 | características de velocidad | 2011-10-04 | 2011-10-10 | 39 | 30h |
| 41 | 2.4.3 | tipo de conector | 2011-10-11 | 2011-10-18 | 40 | 36h |
| 42 | 2.4.4 | fabricantes | 2011-10-19 | 2011-10-19 | 41 | 6h |
| 43 | 2.4.5 | documentación | 2011-10-20 | 2011-10-25 | 39, 42 | 24h |
| 44 | 2.5 | **diseño de placa** | 2011-10-26 | 2011-11-25 |  | 144h |
| 45 | 2.5.1 | obtener librerías | 2011-10-26 | 2011-10-27 | 16, 30, 37, 43 | 12h |
| 46 | 2.5.2 | diseño de esquemático | 2011-10-28 | 2011-11-02 | 45 | 24h |
| 47 | 2.5.3 | **diseño de PCB** | 2011-11-03 | 2011-11-18 |  | 78h |
| 48 | 2.5.3.1 | definir dimensiones | 2011-11-03 | 2011-11-03 | 46 | 6h |
| 49 | 2.5.3.2 | definir capas | 2011-11-03 | 2011-11-03 | 46 | 6h |
| 50 | 2.5.3.3 | distribuir componentes | 2011-11-04 | 2011-11-04 | 48, 49 | 6h |
| 51 | 2.5.3.4 | routear componentes | 2011-11-07 | 2011-11-18 | 50 | 60h |
| 52 | 2.5.4 | generar gerber | 2011-11-21 | 2011-11-21 | 51 | 6h |
| 53 | 2.5.5 | chequear para su fabricación | 2011-11-22 | 2011-11-22 | 52 | 6h |
| 54 | 2.5.6 | documentación | 2011-11-23 | 2011-11-25 | 53 | 18h |
| 55 | 2.6 | documentar modo de prog. y grabado de memoria | 2011-11-28 | 2011-12-02 | 16, 30, 43, 54 | 30h |
| 56 | 2.7 | documentación placa FPGA | 2011-12-05 | 2011-12-16 | 55 | 60h |

| ID | WBS | Task | Start | Finish | Predecessors | Work |
| --- | --- | --- | --- | --- | --- | --- |
| 57 | 3 | **placa BASE** | 2011-12-19 | 2012-08-14 |  | 1086h |
| 58 | 3.1 | **USB/JTAG** | 2011-12-19 | 2012-04-11 |  | 528h |
| 59 | 3.1.1 | busqueda de proyectos LGPL | 2011-12-19 | 2011-12-23 | 56 | 30h |
| 60 | 3.1.2 | **Estudio del interfaz USB** | 2011-12-26 | 2012-01-12 |  | 96h |
| 61 | 3.1.2.1 | especificaciones estandares | 2011-12-26 | 2011-12-27 | 59 | 12h |
| 62 | 3.1.2.2 | trama | 2011-12-26 | 2011-12-26 | 59 | 6h |
| 63 | 3.1.2.3 | velocidades | 2011-12-26 | 2011-12-26 | 59 | 6h |
| 64 | 3.1.2.4 | características eléctricas | 2011-12-28 | 2011-12-29 | 63, 62, 61 | 12h |
| 65 | 3.1.2.5 | precauciones | 2011-12-30 | 2011-12-30 | 59, 64 | 6h |
| 66 | 3.1.2.6 | controladores dedicados | 2012-01-02 | 2012-01-04 | 65, 59 | 18h |
| 67 | 3.1.2.7 | controladores programables | 2012-01-05 | 2012-01-06 | 66 | 12h |
| 68 | 3.1.2.8 | documentación | 2012-01-09 | 2012-01-12 | 67 | 24h |
| 69 | 3.1.3 | **Estudio del interfaz JTAG** | 2012-01-13 | 2012-02-06 |  | 114h |
| 70 | 3.1.3.1 | especificaciones estandares | 2012-01-13 | 2012-01-16 | 68 | 12h |
| 71 | 3.1.3.2 | trama | 2012-01-13 | 2012-01-13 | 68 | 6h |
| 72 | 3.1.3.3 | velocidades | 2012-01-13 | 2012-01-13 | 68 | 6h |
| 73 | 3.1.3.4 | características eléctricas | 2012-01-17 | 2012-01-18 | 70, 71, 72 | 12h |
| 74 | 3.1.3.5 | controladores | 2012-01-19 | 2012-01-24 | 59, 73 | 24h |
| 75 | 3.1.3.6 | compatibilidad con FPGA | 2012-01-25 | 2012-01-30 | 74 | 24h |
| 76 | 3.1.3.7 | documentación | 2012-01-31 | 2012-02-06 | 59, 75 | 30h |
| 77 | 3.1.4 | **diseño USB a JTAG** | 2012-02-07 | 2012-04-04 |  | 258h |
| 78 | 3.1.4.1 | **dispositivo central integrado a utilizar** | 2012-02-07 | 2012-02-24 |  | 84h |
| 79 | 3.1.4.1.1 | estudio de datasheet | 2012-02-07 | 2012-02-09 | 76, 59 | 18h |
| 80 | 3.1.4.1.2 | notas de aplicación | 2012-02-10 | 2012-02-23 | 79 | 60h |
| 81 | 3.1.4.1.3 | encapsulado | 2012-02-24 | 2012-02-24 | 80 | 6h |
| 82 | 3.1.4.2 | busqueda de librerías | 2012-02-27 | 2012-02-28 | 81 | 12h |
| 83 | 3.1.4.3 | diseño de esquemático | 2012-02-29 | 2012-03-06 | 82 | 30h |

| ID | WBS | Task | Start | Finish | Predecessors | Work |
| --- | --- | --- | --- | --- | --- | --- |
| 84 | 3.1.4.4 | **diseño PCB** | 2012-03-07 | 2012-03-15 | 83 | 48h |
| 85 | 3.1.4.4.1 | definir dimensiones | 2012-03-07 | 2012-03-07 | 83 | 6h |
| 86 | 3.1.4.4.2 | definir capas | 2012-03-07 | 2012-03-07 | 83 | 6h |
| 87 | 3.1.4.4.3 | distribuir componentes | 2012-03-08 | 2012-03-08 | 85, 86 | 6h |
| 88 | 3.1.4.4.4 | routear componentes | 2012-03-09 | 2012-03-15 | 87 | 30h |
| 89 | 3.1.4.5 | construcción y testeo | 2012-03-16 | 2012-03-29 | 88 | 60h |
| 90 | 3.1.4.6 | documentación | 2012-03-30 | 2012-04-04 | 89 | 24h |
| 91 | 3.1.5 | Documentación | 2012-04-05 | 2012-04-11 | 59, 90 | 30h |
| 92 | 3.2 | **Periféricos** | 2012-04-12 | 2012-06-12 |  | 288h |
| 93 | 3.2.1 | **Designar datos I/O** | 2012-04-12 | 2012-05-07 |  | 132h |
| 94 | 3.2.1.1 | Pulsadores | 2012-04-12 | 2012-04-12 | 91 | 6h |
| 95 | 3.2.1.2 | Llaves | 2012-04-12 | 2012-04-12 | 91 | 6h |
| 96 | 3.2.1.3 | LEDs | 2012-04-12 | 2012-04-12 | 91 | 6h |
| 97 | 3.2.1.4 | Display | 2012-04-12 | 2012-04-12 | 91 | 6h |
| 98 | 3.2.1.5 | Conector IDE | 2012-04-12 | 2012-04-12 | 91 | 6h |
| 99 | 3.2.1.6 | **datos aislados galvánicamente** | 2012-04-13 | 2012-04-25 |  | 54h |
| 100 | 3.2.1.6.1 | requerimientos y fabricantes posibles | 2012-04-13 | 2012-04-18 | 94, 95, 96, 97, 98 | 24h |
| 101 | 3.2.1.6.2 | esquemático y asignación de pines | 2012-04-19 | 2012-04-20 | 100 | 12h |
| 102 | 3.2.1.6.3 | potencia | 2012-04-23 | 2012-04-24 | 101 | 12h |
| 103 | 3.2.1.6.4 | documentación | 2012-04-25 | 2012-04-25 | 102 | 6h |
| 104 | 3.2.1.7 | Esquema de conexionado y designación de pines FPGA | 2012-04-26 | 2012-04-27 | 103 | 12h |
| 105 | 3.2.1.8 | Cálculo de potencia de periféricos | 2012-04-30 | 2012-05-02 | 104 | 18h |
| 106 | 3.2.1.9 | Documentación | 2012-05-03 | 2012-05-07 | 105 | 18h |
| 107 | 3.2.2 | **Conversores** | 2012-05-08 | 2012-06-05 |  | 126h |
| 108 | 3.2.2.1 | Requerimientos y fabricantes posibles | 2012-05-08 | 2012-05-14 | 106 | 30h |

| ID | WBS | Task | Start | Finish | Predecessors | Work |
| --- | --- | --- | --- | --- | --- | --- |
| 109 | 3.2.2.2 | **ADC** | 2012-05-15 | 2012-05-22 |  | 36h |
| 110 | 3.2.2.2.1 | resolución | 2012-05-15 | 2012-05-15 | 108 | 6h |
| 111 | 3.2.2.2.2 | comunicación serial | 2012-05-16 | 2012-05-16 | 110 | 6h |
| 112 | 3.2.2.2.3 | esquematico y asignación de pines | 2012-05-17 | 2012-05-18 | 111 | 12h |
| 113 | 3.2.2.2.4 | documentación | 2012-05-21 | 2012-05-22 | 112 | 12h |
| 114 | 3.2.2.3 | **DAC** | 2012-05-23 | 2012-05-30 |  | 36h |
| 115 | 3.2.2.3.1 | resolución | 2012-05-23 | 2012-05-23 | 113 | 6h |
| 116 | 3.2.2.3.2 | comunicación serial | 2012-05-24 | 2012-05-24 | 115 | 6h |
| 117 | 3.2.2.3.3 | esquemático y asignación de pines | 2012-05-25 | 2012-05-28 | 116 | 12h |
| 118 | 3.2.2.3.4 | docuentación | 2012-05-29 | 2012-05-30 | 117 | 12h |
| 119 | 3.2.2.4 | Cálculo de potencia | 2012-05-31 | 2012-06-01 | 113, 118 | 12h |
| 120 | 3.2.2.5 | Documentación | 2012-06-04 | 2012-06-05 | 119 | 12h |
| 121 | 3.2.3 | **Puerto Serie** | 2012-06-06 | 2012-06-11 |  | 24h |
| 122 | 3.2.3.1 | diseño de driver: DB9 y conector IDE para un 2do puerto | 2012-06-06 | 2012-06-06 | 120 | 6h |
| 123 | 3.2.3.2 | esquemático y asignación de pines | 2012-06-07 | 2012-06-07 | 122 | 6h |
| 124 | 3.2.3.3 | calculo de potencia | 2012-06-08 | 2012-06-08 | 123 | 6h |
| 125 | 3.2.3.4 | documentación | 2012-06-11 | 2012-06-11 | 124 | 6h |
| 126 | 3.2.4 | asociar todo los periféricos con conector FPGA | 2012-06-12 | 2012-06-12 | 125 | 6h |
| 127 | 3.3 | **Fuente de Alimentacion** | 2012-06-13 | 2012-07-16 |  | 144h |
| 128 | 3.3.1 | requerimientos de potencia | 2012-06-13 | 2012-06-14 | 126 | 12h |
| 129 | 3.3.2 | **fabricantes IC de fuentes** | 2012-06-15 | 2012-06-21 |  | 30h |
| 130 | 3.3.2.1 | estudio notas de aplicación | 2012-06-15 | 2012-06-19 | 128 | 18h |
| 131 | 3.3.2.2 | análisis de costo | 2012-06-20 | 2012-06-20 | 130 | 6h |
| 132 | 3.3.2.3 | documentación | 2012-06-21 | 2012-06-21 | 131 | 6h |

| ID | WBS | Task | Start | Finish | Predecessors | Work |
| --- | --- | --- | --- | --- | --- | --- |
| 133 | 3.3.3 | **fabricantes de reguladores** | 2012-06-22 | 2012-06-26 |  | 18h |
| 134 | 3.3.3.1 | estudio notas de aplicación | 2012-06-22 | 2012-06-22 | 132 | 6h |
| 135 | 3.3.3.2 | análisis de costo | 2012-06-25 | 2012-06-25 | 134 | 6h |
| 136 | 3.3.3.3 | documentación | 2012-06-26 | 2012-06-26 | 135 | 6h |
| 137 | 3.3.4 | esquemático de fuente | 2012-06-27 | 2012-07-02 | 136 | 24h |
| 138 | 3.3.5 | esquemático de regulador | 2012-07-03 | 2012-07-04 | 137 | 12h |
| 139 | 3.3.6 | asignación de pines y jumper de configuración | 2012-07-05 | 2012-07-05 | 138 | 6h |
| 140 | 3.3.7 | testeo | 2012-07-06 | 2012-07-12 | 139 | 30h |
| 141 | 3.3.8 | documentación | 2012-07-13 | 2012-07-16 | 140 | 12h |
| 142 | 3.4 | **diseño de placa** | 2012-07-17 | 2012-08-09 |  | 108h |
| 143 | 3.4.1 | obtener liberías | 2012-07-17 | 2012-07-17 | 141 | 6h |
| 144 | 3.4.2 | diseño de esquemático | 2012-07-18 | 2012-07-18 | 143 | 6h |
| 145 | 3.4.3 | **diseño PCB** | 2012-07-19 | 2012-08-06 |  | 78h |
| 146 | 3.4.3.1 | definir dimensiones | 2012-07-19 | 2012-07-19 | 144 | 6h |
| 147 | 3.4.3.2 | definir capas | 2012-07-20 | 2012-07-20 | 146 | 6h |
| 148 | 3.4.3.3 | distribuir componentes | 2012-07-23 | 2012-07-23 | 147 | 6h |
| 149 | 3.4.3.4 | routear componentes | 2012-07-24 | 2012-08-06 | 148 | 60h |
| 150 | 3.4.4 | generar gerber | 2012-08-07 | 2012-08-07 | 149 | 6h |
| 151 | 3.4.5 | chequear para su fabricación | 2012-08-08 | 2012-08-08 | 150 | 6h |
| 152 | 3.4.6 | documentación | 2012-08-09 | 2012-08-09 | 151 | 6h |
| 153 | 3.5 | documentación placa BASE | 2012-08-10 | 2012-08-14 | 152 | 18h |
| 154 | 4 | **importación** | 2012-08-09 | 2012-10-12 |  | 552h |
| 155 | 4.1 | **Importación de placas** | 2012-08-09 | 2012-10-11 |  | 276h |
| 156 | 4.1.1 | (estimativo)presupuestar online placas | 2012-08-09 | 2012-08-09 | 53, 151 | 6h |
| 157 | 4.1.2 | contactar fabricantes y cotizar | 2012-08-10 | 2012-08-14 | 156 | 18h |
| 158 | 4.1.3 | realizar pago | 2012-08-15 | 2012-08-16 | 157 | 12h |
| 159 | 4.1.4 | comienza proceso de fabricación | 2012-08-17 | 2012-10-11 | 158 | 240h |

| ID | WBS | Task | Start | Finish | Predecessors | Work |
| --- | --- | --- | --- | --- | --- | --- |
| 160 | 4.2 | **Importación de componentes** | 2012-08-10 | 2012-10-11 |  | 270h |
| 161 | 4.2.1 | cotizar online componentes | 2012-08-10 | 2012-08-10 | 54, 152 | 6h |
| 162 | 4.2.2 | chequear encapsulados a comprar | 2012-08-13 | 2012-08-13 | 161 | 6h |
| 163 | 4.2.3 | definir cantidad a comprar | 2012-08-14 | 2012-08-14 | 162 | 6h |
| 164 | 4.2.4 | realizar pago | 2012-08-15 | 2012-08-16 | 163 | 12h |
| 165 | 4.2.5 | comienza proceso de envío de componentes | 2012-08-17 | 2012-10-11 | 164 | 240h |
| 166 | 4.3 | documentación de facturación y recepción de componentes | 2012-10-12 | 2012-10-12 | 159, 165 | 6h |
| 167 | 5 | **armado placas** | 2012-10-15 | 2012-11-02 |  | 90h |
| 168 | 5.1 | obtener herramientas de soldadura SMD | 2012-10-15 | 2012-10-17 | 166 | 18h |
| 169 | 5.2 | **Construcción placa FPGA** | 2012-10-18 | 2012-10-23 |  | 24h |
| 170 | 5.2.1 | soldado de componentes principales | 2012-10-18 | 2012-10-19 | 168 | 12h |
| 171 | 5.2.2 | soldado de demás componentes | 2012-10-22 | 2012-10-22 | 170 | 6h |
| 172 | 5.2.3 | testear pines de alimentación | 2012-10-23 | 2012-10-23 | 171 | 6h |
| 173 | 5.3 | **Construcción placa Base** | 2012-10-24 | 2012-10-29 |  | 24h |
| 174 | 5.3.1 | soldado de componentes principales | 2012-10-24 | 2012-10-25 | 172 | 12h |
| 175 | 5.3.2 | soldado de demás componentes | 2012-10-26 | 2012-10-26 | 174 | 6h |
| 176 | 5.3.3 | testear pines de alimentación | 2012-10-29 | 2012-10-29 | 175 | 6h |
| 177 | 5.4 | documentación | 2012-10-30 | 2012-11-02 | 176 | 24h |
| 178 | 6 | **Testeo** | 2012-11-05 | 2012-11-15 |  | 54h |
| 179 | 6.1 | revisar continuidad de alimentación | 2012-11-05 | 2012-11-05 | 177 | 6h |
| 180 | 6.2 | alimentar circuito con fuente reguladora de corriente | 2012-11-06 | 2012-11-06 | 179 | 6h |
| 181 | 6.3 | diseñar arquitectura en VHDL para testing | 2012-11-07 | 2012-11-12 | 180 | 24h |
| 182 | 6.4 | medición de consumo de potencia | 2012-11-13 | 2012-11-13 | 181 | 6h |
| 183 | 6.5 | documentación | 2012-11-14 | 2012-11-15 | 182 | 12h |

| ID | WBS | Task | Start | Finish | Predecessors | Work |
| --- | --- | --- | --- | --- | --- | --- |
| 184 | 7 | **Documentación** | 2012-11-16 | 2013-01-10 |  | 240h |
| 185 | 7.1 | placa FPGA | 2012-11-16 | 2012-11-20 | 56, 183 | 18h |
| 186 | 7.2 | placa BASE | 2012-11-21 | 2012-11-27 | 185, 153 | 30h |
| 187 | 7.3 | hardware | 2012-11-28 | 2012-11-29 | 186 | 12h |
| 188 | 7.4 | software | 2012-11-30 | 2012-11-30 | 187 | 6h |
| 189 | 7.5 | asignar formato a documento (LaTeX) | 2012-12-03 | 2012-12-03 | 188 | 6h |
| 190 | 7.6 | **diseñar paper para publicación** | 2012-12-04 | 2012-12-24 |  | 90h |
| 191 | 7.6.1 | publicaciones en revistas científicas | 2012-12-04 | 2012-12-17 | 189 | 60h |
| 192 | 7.6.2 | participación en concursos de diseño HW | 2012-12-18 | 2012-12-24 | 191 | 30h |
| 193 | 7.7 | **publicar en opencores.org** | 2012-12-25 | 2013-01-01 |  | 36h |
| 194 | 7.7.1 | diseñar sitio en HTML | 2012-12-25 | 2012-12-31 | 192 | 30h |
| 195 | 7.7.2 | fotos y vídeos | 2013-01-01 | 2013-01-01 | 194 | 6h |
| 196 | 7.8 | presentación a docentes de cátedra | 2013-01-02 | 2013-01-10 | 195 | 42h |
| 197 | 8 | **Transferencia** | 2013-01-11 | 2013-01-21 |  | 42h |
| 198 | 8.1 | acto de entraga de tecnología al LTDI | 2013-01-11 | 2013-01-11 | 196 | 6h |
| 199 | 8.2 | capacitación para el uso de plataforma | 2013-01-14 | 2013-01-18 | 198 | 30h |
| 200 | 8.3 | brindís por fin del proyecto | 2013-01-21 | 2013-01-21 | 199 | 6h |
